# Route 49 Bridge over Maurice River

Schedule from Primavera P6, 2024-07-25 to 2026-10-28, data date 2024-07-25.

## Calendars

- CNT0 - 1 - State Bus. Days: Mon-Fri 08:00-12:00, 13:00-17:00; Sat-Sun off.
- CNT0 - 6 - Bridgework: Mon-Fri 08:00-12:00, 13:00-17:00; Sat-Sun off. Exceptions (off unless hours are given): 2024-10-04, 2024-10-11, 2024-10-18, 2024-10-25, 2024-11-01, 2024-11-04, 2024-11-08, 2024-11-11, 2024-11-15, 2024-11-18, 2024-11-22, 2024-11-25, 2024-11-28 to 2024-11-29, 2024-12-06, 2024-12-09, 2024-12-13, 2024-12-16, 2024-12-20, 2024-12-23 to 2024-12-27, 2024-12-30 to 2025-01-03, 2025-01-06 to 2025-01-07, 2025-01-10, 2025-01-13, 2025-01-17, 2025-01-20, 2025-01-24, 2025-01-27 to 2025-01-28, 2025-01-31, 2025-02-03, 2025-02-06 to 2025-02-07, 2025-02-10, 2025-02-14, 2025-02-17, 2025-02-21, 2025-02-24 to 2025-02-25, 2025-02-28, 2025-03-03 to 2025-03-07, 2025-03-10 to 2025-03-14, 2025-03-17, 2025-04-04, 2025-04-11, 2025-04-18, 2025-04-25, 2025-11-03, 2025-11-10, 2025-11-17, 2025-11-24, 2025-11-28, 2025-12-01, 2025-12-05, 2025-12-08, 2025-12-12, 2025-12-15, 2025-12-19, 2025-12-22, 2025-12-24 to 2025-12-26, 2025-12-29 to 2026-01-02, 2026-01-05, 2026-01-09, 2026-01-12, 2026-01-16, 2026-01-19, 2026-01-22 to 2026-01-23, 2026-01-26, 2026-01-29 to 2026-01-30, 2026-02-02, 2026-02-06, 2026-02-09, 2026-02-13, 2026-02-16, 2026-02-19 to 2026-02-20, 2026-02-23, 2026-02-26 to 2026-02-27, 2026-03-02, 2026-03-06, 2026-03-09, 2026-03-13, 2026-03-16, 2026-03-20, 2026-03-23, 2026-03-27 08:00-16:00, 2026-03-30 08:00-16:00.
- CNT0 - 4 - 7 Day Work Week: Mon-Sun 08:00-12:00, 13:00-17:00.
- Route 49 In Water Work: Mon-Fri 08:00-12:00, 13:00-17:00; Sat-Sun off. Exceptions (off unless hours are given): 2024-07-25 to 2024-07-26 08:00-12:00, 13:00-17:00, 2024-07-29 to 2024-08-02 08:00-12:00, 13:00-17:00, 2024-08-05 to 2024-08-09 08:00-12:00, 13:00-17:00, 2024-08-12 to 2024-08-16 08:00-12:00, 13:00-17:00, 2024-08-19 to 2024-08-23 08:00-12:00, 13:00-17:00, 2024-08-26 to 2024-08-30 08:00-12:00, 13:00-17:00, 2024-09-02 to 2024-09-06, 2024-09-09 to 2024-09-13, 2024-09-16 to 2024-09-20, 2024-09-23 to 2024-09-27, 2024-09-30 to 2024-10-04, 2024-10-07 to 2024-10-11, 2024-10-14 to 2024-10-18, 2024-10-21 to 2024-10-25, 2024-10-28 to 2024-11-01, 2024-11-04 to 2024-11-08, 2024-11-11 to 2024-11-15, 2024-11-18 to 2024-11-22, 2024-11-25 to 2024-11-29, 2024-12-25, 2025-01-01, 2025-01-02 to 2025-01-03 08:00-12:00, 13:00-17:00, 2025-01-06 to 2025-01-10 08:00-12:00, 13:00-17:00, 2025-01-13 to 2025-01-17 08:00-12:00, 13:00-17:00, 2025-01-20 to 2025-01-24 08:00-12:00, 13:00-17:00, 2025-01-27 to 2025-01-31 08:00-12:00, 13:00-17:00, 2025-02-03 to 2025-02-07 08:00-12:00, 13:00-17:00, 2025-02-10 to 2025-02-14 08:00-12:00, 13:00-17:00, 2025-02-17 to 2025-02-21 08:00-12:00, 13:00-17:00, 2025-02-24 to 2025-02-28 08:00-12:00, 13:00-17:00, 2025-03-03 to 2025-03-07, 2025-03-10 to 2025-03-14, 2025-03-17 to 2025-03-21, 2025-03-24 to 2025-03-28, 2025-03-31 to 2025-04-04, 2025-04-07 to 2025-04-11, 2025-04-14 to 2025-04-18, 2025-04-21 to 2025-04-25, 2025-04-28 to 2025-05-02, 2025-05-05 to 2025-05-09, 2025-05-12 to 2025-05-16, 2025-05-19 to 2025-05-23, 2025-05-26 to 2025-05-30, 2025-06-02 to 2025-06-06, 2025-06-09 to 2025-06-13, 2025-06-16 to 2025-06-20, 2025-06-23 to 2025-06-27, 2025-06-30, 2025-07-01 to 2025-07-03 08:00-12:00, 13:00-17:00, 2025-07-04, 2025-07-07 to 2025-07-11 08:00-12:00, 13:00-17:00, 2025-07-14 to 2025-07-18 08:00-12:00, 13:00-17:00, 2025-07-21 to 2025-07-25 08:00-12:00, 13:00-17:00, 2025-07-28 to 2025-08-01 08:00-12:00, 13:00-17:00, 2025-08-04 to 2025-08-08 08:00-12:00, 13:00-17:00, 2025-08-11 to 2025-08-15 08:00-12:00, 13:00-17:00, 2025-08-18 to 2025-08-22 08:00-12:00, 13:00-17:00, 2025-08-25 to 2025-08-29 08:00-12:00, 13:00-17:00, 2025-09-01 to 2025-09-05, 2025-09-08 to 2025-09-12, 2025-09-15 to 2025-09-19, 2025-09-22 to 2025-09-26, 2025-09-29 to 2025-10-03, 2025-10-06 to 2025-10-10, 2025-10-13 to 2025-10-17, 2025-10-20 to 2025-10-24, 2025-10-27 to 2025-10-31, 2025-11-03 to 2025-11-07, 2025-11-10 to 2025-11-14, 2025-11-17 to 2025-11-21, 2025-11-24 to 2025-11-28, 2025-12-25, 2026-01-01, 2026-01-02 08:00-12:00, 13:00-17:00, 2026-01-05 to 2026-01-09 08:00-12:00, 13:00-17:00, 2026-01-12 to 2026-01-16 08:00-12:00, 13:00-17:00, 2026-01-19 to 2026-01-23 08:00-12:00, 13:00-17:00, 2026-01-26 to 2026-01-30 08:00-12:00, 13:00-17:00, 2026-02-02 to 2026-02-06 08:00-12:00, 13:00-17:00, 2026-02-09 to 2026-02-13 08:00-12:00, 13:00-17:00, 2026-02-16 to 2026-02-20 08:00-12:00, 13:00-17:00, 2026-02-23 to 2026-02-27 08:00-12:00, 13:00-17:00, 2026-03-02 to 2026-03-06, 2026-03-09 to 2026-03-13, 2026-03-16 to 2026-03-20, 2026-03-23 to 2026-03-27, 2026-03-30 to 2026-04-03, 2026-04-06 to 2026-04-10, 2026-04-13 to 2026-04-17, 2026-04-20 to 2026-04-24, 2026-04-27 to 2026-05-01, 2026-05-04 to 2026-05-08, 2026-05-11 to 2026-05-15, 2026-05-18 to 2026-05-22, 2026-05-25 to 2026-05-29, 2026-06-01 to 2026-06-05, 2026-06-08 to 2026-06-12, 2026-06-15 to 2026-06-19, 2026-06-22 to 2026-06-26, 2026-06-29 to 2026-06-30, 2026-07-01 to 2026-07-03 08:00-12:00, 13:00-17:00, 2026-07-06, 2026-07-07 to 2026-07-10 08:00-12:00, 13:00-17:00, 2026-07-13 to 2026-07-17 08:00-12:00, 13:00-17:00, 2026-07-20 to 2026-07-24 08:00-12:00, 13:00-17:00, 2026-07-27 to 2026-07-31 08:00-12:00, 13:00-17:00, 2026-08-03 to 2026-08-07 08:00-12:00, 13:00-17:00, 2026-08-10 to 2026-08-14 08:00-12:00, 13:00-17:00, 2026-08-17 to 2026-08-21 08:00-12:00, 13:00-17:00, 2026-08-24 to 2026-08-28 08:00-12:00, 13:00-17:00, 2026-08-31 08:00-12:00, 13:00-17:00, 2026-09-01 to 2026-09-04, 2026-09-07 to 2026-09-11, 2026-09-14 to 2026-09-18, 2026-09-21 to 2026-09-25, 2026-09-28 to 2026-10-02, 2026-10-05 to 2026-10-09, 2026-10-12 to 2026-10-16, 2026-10-19 to 2026-10-23, 2026-10-26 to 2026-10-28.
- Route 49 Tree Clearing: Mon-Fri 08:00-12:00, 13:00-17:00; Sat-Sun off. Exceptions (off unless hours are given): 2024-07-25 to 2024-07-26, 2024-07-29 to 2024-08-02, 2024-08-05 to 2024-08-09, 2024-08-12 to 2024-08-16, 2024-08-19 to 2024-08-23, 2024-08-26 to 2024-08-30, 2024-09-02 to 2024-09-06 08:00-12:00, 13:00-17:00, 2024-09-09 to 2024-09-13 08:00-12:00, 13:00-17:00, 2024-09-16 to 2024-09-20 08:00-12:00, 13:00-17:00, 2024-09-23 to 2024-09-27 08:00-12:00, 13:00-17:00, 2024-09-30 to 2024-10-04 08:00-12:00, 13:00-17:00, 2024-10-07 to 2024-10-11 08:00-12:00, 13:00-17:00, 2024-10-14 to 2024-10-18 08:00-12:00, 13:00-17:00, 2024-10-21 to 2024-10-25 08:00-12:00, 13:00-17:00, 2024-10-28 to 2024-11-01 08:00-12:00, 13:00-17:00, 2024-11-04 to 2024-11-08 08:00-12:00, 13:00-17:00, 2024-11-11 to 2024-11-13 08:00-12:00, 13:00-17:00, 2024-11-28, 2024-12-25, 2025-01-01, 2025-04-01 to 2025-04-04, 2025-04-07 to 2025-04-11, 2025-04-14 to 2025-04-18, 2025-04-21 to 2025-04-25, 2025-04-28 to 2025-05-02, 2025-05-05 to 2025-05-09, 2025-05-12 to 2025-05-16, 2025-05-19 to 2025-05-23, 2025-05-26 to 2025-05-30, 2025-06-02 to 2025-06-06, 2025-06-09 to 2025-06-13, 2025-06-16 to 2025-06-20, 2025-06-23 to 2025-06-27, 2025-06-30 to 2025-07-04, 2025-07-07 to 2025-07-11, 2025-07-14 to 2025-07-18, 2025-07-21 to 2025-07-25, 2025-07-28 to 2025-08-01, 2025-08-04 to 2025-08-08, 2025-08-11 to 2025-08-15, 2025-08-18 to 2025-08-22, 2025-08-25 to 2025-08-29, 2025-09-01, 2025-09-02 to 2025-09-05 08:00-12:00, 13:00-17:00, 2025-09-08 to 2025-09-12 08:00-12:00, 13:00-17:00, 2025-09-15 to 2025-09-19 08:00-12:00, 13:00-17:00, 2025-09-22 to 2025-09-26 08:00-12:00, 13:00-17:00, 2025-09-29 to 2025-10-03 08:00-12:00, 13:00-17:00, 2025-10-06 to 2025-10-10 08:00-12:00, 13:00-17:00, 2025-10-13 to 2025-10-17 08:00-12:00, 13:00-17:00, 2025-10-20 to 2025-10-24 08:00-12:00, 13:00-17:00, 2025-10-27 to 2025-10-31 08:00-12:00, 13:00-17:00, 2025-11-03 to 2025-11-07 08:00-12:00, 13:00-17:00, 2025-11-10 to 2025-11-14 08:00-12:00, 13:00-17:00, 2025-11-27, 2025-12-25, 2026-01-01, 2026-04-01 to 2026-04-03, 2026-04-06 to 2026-04-10, 2026-04-13 to 2026-04-17, 2026-04-20 to 2026-04-24, 2026-04-27 to 2026-05-01, 2026-05-04 to 2026-05-08, 2026-05-11 to 2026-05-15, 2026-05-18 to 2026-05-22, 2026-05-25 to 2026-05-29, 2026-06-01 to 2026-06-05, 2026-06-08 to 2026-06-12, 2026-06-15 to 2026-06-19, 2026-06-22 to 2026-06-26, 2026-06-29 to 2026-07-03, 2026-07-06 to 2026-07-10, 2026-07-13 to 2026-07-17, 2026-07-20 to 2026-07-24, 2026-07-27 to 2026-07-31, 2026-08-03 to 2026-08-07, 2026-08-10 to 2026-08-14, 2026-08-17 to 2026-08-21, 2026-08-24 to 2026-08-28, 2026-08-31, 2026-09-01 to 2026-09-04 08:00-12:00, 13:00-17:00, 2026-09-07, 2026-09-08 to 2026-09-11 08:00-12:00, 13:00-17:00, 2026-09-14 to 2026-09-18 08:00-12:00, 13:00-17:00, 2026-09-21 to 2026-09-25 08:00-12:00, 13:00-17:00, 2026-09-28 to 2026-10-02 08:00-12:00, 13:00-17:00, 2026-10-05 to 2026-10-09 08:00-12:00, 13:00-17:00, 2026-10-12 to 2026-10-16 08:00-12:00, 13:00-17:00, 2026-10-19 to 2026-10-23 08:00-12:00, 13:00-17:00, 2026-10-26 to 2026-10-28 08:00-12:00, 13:00-17:00.

## Schedule

| ID | WBS | Activity | Type | Duration | Start | Finish | Predecessors | Total float | Free float | Calendar | RESP - Responsibility |
| --- | --- | --- | --- | --- | --- | --- | --- | --- | --- | --- | --- |
|  | 0 | **Milestones** |  |  | 2024-07-25 | 2026-10-28 |  |  |  |  |  |
| M100 |  | Advertise Date | milestone | 0d | 2024-07-25 | 2024-07-25 |  | 0d |  | CNT0 - 4 - 7 Day Work Week |  |
| M200 |  | Bid Date | milestone | 0d | 2024-08-15 | 2024-08-15 | A100 | 0d |  | CNT0 - 4 - 7 Day Work Week |  |
| M300 |  | Award Date | milestone | 0d | 2024-09-05 | 2024-09-05 | A200 | 0d |  | CNT0 - 4 - 7 Day Work Week |  |
| M500 |  | Construction Start Date | milestone | 0d | 2024-11-21 | 2024-11-21 | A300 | 35d |  | CNT0 - 4 - 7 Day Work Week |  |
| M110 |  | Pre-Stage 1A Complete | milestone | 0d | 2025-01-21 | 2025-01-21 | B1060, B1020 | 0d |  | CNT0 - 4 - 7 Day Work Week |  |
| M115 |  | Pre-Stage 1B Complete | milestone | 0d | 2025-01-29 | 2025-01-29 | C0920 | 0d |  | CNT0 - 4 - 7 Day Work Week |  |
| M120 |  | Stage 1 Complete | milestone | 0d | 2025-09-11 | 2025-09-11 | C1340, C1320, C1330, C1300 | 69d | 0d | CNT0 - 4 - 7 Day Work Week |  |
| M130 |  | Stage 2 Complete | milestone | 0d | 2026-07-15 | 2026-07-15 | D1330, D1310, D1290 | 0d |  | CNT0 - 4 - 7 Day Work Week |  |
| M900 |  | Substantial Completion | milestone | 0d | 2026-08-05 | 2026-08-05 | A1010, A1020, A1030, A1040, A1060 | 0d |  | CNT0 - 4 - 7 Day Work Week |  |
| M950 |  | Completion | milestone | 0d | 2026-10-28 | 2026-10-28 | F9000 | 0d |  | CNT0 - 4 - 7 Day Work Week |  |
|  | C | **Construction** |  |  | 2024-07-25 | 2026-10-28 |  |  |  |  |  |
|  | 00 | **Administrative** |  |  | 2024-07-25 | 2024-11-20 |  |  |  |  |  |
| A100 |  | Time frame Between Advertisement and Bid |  | 15d | 2024-07-25 | 2024-08-14 | M100 | 0d |  |  | NDOT |
| A200 |  | Time frame Between Bid and Award |  | 15d | 2024-08-15 | 2024-09-04 | M200 | 0d |  |  | NDOT |
| A300 |  | Time frame Between Award and Construction |  | 55d | 2024-09-05 | 2024-11-20 | M300 | 25d | 0d |  | NDOT |
|  | 1 | **Utility Notifications** |  |  | 2024-09-05 | 2025-01-08 |  |  |  |  |  |
| U100 |  | Advance Notice to City of Millville |  | 40d | 2024-09-05 | 2024-10-30 | M300 | 125d | 50d |  | CONP |
| U200 |  | Advance Notice to Verizon |  | 28d | 2024-09-05 | 2024-10-14 | M300 | 206d | 152d |  | CONP |
| U300 |  | Advance Notice to ACE |  | 90d | 2024-09-05 | 2025-01-08 | M300 | 215d | 166d |  | CONP |
| U400 |  | Advance Notice to SJ Gas |  | 30d | 2024-09-05 | 2024-10-16 | M300 | 154d | 102d |  |  |
|  | Pre-Stage 1 | **Pre-Stage 1A** |  |  | 2024-12-26 | 2025-08-06 |  |  |  |  |  |
| B1000 |  | Mobilization |  | 10d | 2024-12-26 | 2025-01-08 | M500, PS100 FF, PS110 FF, PS120 FF, PS130 FF, PS140 FF, PS150, PS160, PS170, PS180, PS190, PS200, PS210, PS220, PS230, PS240, PS250, PS260, PS270, PS280, PS290, PS300, PS310, PS350, PS340, PS360, PS370, PS320, PS330, PS420, PS400, PS390, PS380 | 0d |  |  |  |
| B1030 |  | Place MPT |  | 2d | 2025-01-07 | 2025-01-08 | B1000 FF | 0d |  |  |  |
| B1010 |  | Relocation City of Millville Sanitary Force Main (Directional Drilling, Tie-in and Rem. Exist) |  | 150d | 2025-01-09 | 2025-08-06 | U100, B1000 | 75d | 26d |  |  |
| B1020 |  | Place Advance Warning Signs |  | 2d | 2025-01-09 | 2025-01-10 | B1000 | 7d |  |  |  |
| B1040 |  | Install SESC Measures |  | 2d | 2025-01-09 | 2025-01-10 | B1030 | 0d |  |  |  |
| B1050 |  | Clearing Site |  | 3d | 2025-01-13 | 2025-01-15 | B1040 | 0d |  | Route 49 Tree Clearing |  |
| B1060 |  | Remove 3' of existing sidewalk and construct temporary pavement |  | 4d | 2025-01-16 | 2025-01-21 | B1050 | 0d |  |  |  |

| ID | WBS | Activity | Duration | Start | Finish | Predecessors | Total float | Free float | Calendar |
| --- | --- | --- | --- | --- | --- | --- | --- | --- | --- |
|  | 2 | **Pre-Stage 1B** |  | 2025-01-22 | 2025-01-29 |  |  |  |  |
| C0900 |  | Place MPT and Shift Traffic and Implement Temporary Traffic Signal System | 2d | 2025-01-22 | 2025-01-23 | M110 | 0d |  |  |
| C0910 |  | Cut and Remove of Existing Deck | 1d | 2025-01-24 | 2025-01-24 | C0900 | 0d |  |  |
| C0920 |  | Install Temporary Beam | 3d | 2025-01-27 | 2025-01-29 | C0910 | 0d |  |  |
|  | 01 | **Stage 1** |  | 2025-01-30 | 2025-09-11 |  |  |  |  |
| C1000 |  | Place MPT and Shift Traffic and Implement Temporary Traffic Signal System | 7d | 2025-01-30 | 2025-02-07 | M115 | 0d |  |  |
| C1010 |  | Install Temporary Shielding | 2d | 2025-02-10 | 2025-02-11 | C1000 | 1d |  |  |
| C1030 |  | Temporary support Verizon conduits | 3d | 2025-02-10 | 2025-02-12 | C1000 | 0d |  |  |
| C1040 |  | Remove Portion of Existing Deck and Superstructure | 5d | 2025-02-13 | 2025-02-19 | C1030, C1010 | 0d |  |  |
| C1060 |  | Install Temporary cofferdam around portion of exist. Abutments and Pier | 7d | 2025-02-20 | 2025-02-28 | C1040 | 0d |  | Route 49 In Water Work |
| C1070 |  | Install Temporary Sheeting Along Staging Line | 2d | 2025-02-20 | 2025-02-21 | C1040 | 55d | 0d |  |
| C1050 |  | Remove existing bridge approach roadways & excavate to bottom of proposed backwall | 2d | 2025-02-24 | 2025-02-25 | C1040, C1070 | 55d | 3d |  |
| C1080 |  | Remove Concrete 1" Beyond Rebar at Abutments and Pier | 5d | 2025-03-03 | 2025-03-07 | C1060, C1050, C1070 | 67d | 15d |  |
| C1090 |  | Remove portion of existing abutment backwalls and modify beam seats | 5d | 2025-03-03 | 2025-03-07 | C1060, C1070, C1050 | 52d | 0d |  |
| C1100 |  | Install Gas Line and Roadway Telephone/Drainage Features | 15d | 2025-03-10 | 2025-03-28 | C1050, C1070, C1060, U400, C1090 | 52d | 0d |  |
| C1110 |  | Form New Face of Pier and Abutments | 7d | 2025-03-31 | 2025-04-09 | C1080, C1090, C1100 | 48d | 0d | CNT0 - 6 - Bridgework |
| C1120 |  | Place and Cure Concrete for Pier and Abutment Faces & Beam Seats | 20d | 2025-04-10 | 2025-05-12 | C1110 | 48d | 0d | CNT0 - 6 - Bridgework |
| C1130 |  | Install new bearings and erect superstructure | 2d | 2025-05-13 | 2025-05-14 | C1100, C1120 | 48d | 0d |  |
| C1140 |  | Attach prop./exist. Verizon conduits to new superstructure and remove temporary supports. | 4d | 2025-05-15 | 2025-05-20 | C1130, U200 | 54d | 6d |  |
| C1150 |  | Install Water Main On New Superstructure & Portion Of Roadway | 7d | 2025-05-15 | 2025-05-23 | C1130 | 51d | 3d |  |
| C1160 |  | Form portion of backwall and install reinforcement steel | 10d | 2025-05-15 | 2025-05-28 | C1130 | 48d | 0d |  |
| C1170 |  | Place and cure concrete for backwalls | 7d | 2025-05-29 | 2025-06-06 | C1160, C1150, C1140 | 51d | 3d | CNT0 - 6 - Bridgework |
| C1180 |  | Install deck pans/ overhang and reinforcement steel | 10d | 2025-05-29 | 2025-06-11 | C1140, C1150, C1160 | 48d | 0d |  |
| C1190 |  | Place and cure deck concrete | 15d | 2025-06-12 | 2025-07-02 | C1180, C1170 | 48d | 0d | CNT0 - 6 - Bridgework |
| C1200 |  | Backfill behind backwall/abutments | 2d | 2025-06-19 | 2025-06-20 | C1170, C1180 FS+5d | 56d | 8d |  |
| C1210 |  | Form & place reinforcement for portion of sleeper slabs | 5d | 2025-06-23 | 2025-06-27 | C1170, C1180 FS+7d | 51d | 3d |  |
| C1220 |  | Place & cure sleeper slab concrete | 8d | 2025-07-03 | 2025-07-14 | C1210, C1190, C1200 | 48d | 0d | CNT0 - 6 - Bridgework |
| C1230 |  | Form & place reinforcement and strip seal joint for portion of relief slab | 5d | 2025-07-08 | 2025-07-14 | C1190 FS+3d, C1200, C1210 | 48d | 0d |  |
| C1240 |  | Place & cure relief slab concrete | 15d | 2025-07-15 | 2025-08-04 | C1230, C1220 | 48d | 0d | CNT0 - 6 - Bridgework |
| C1250 |  | Form deck & relief slab sidewalk. Install reinforcement steel | 5d | 2025-07-18 | 2025-07-24 | C1220 FS+3d, C1230 | 57d | 7d |  |
| C1260 |  | Place and cure deck & relief slab sidewalk concrete | 8d | 2025-08-05 | 2025-08-14 | C1250, C1240 | 50d | 2d | CNT0 - 6 - Bridgework |
| C1270 |  | Form deck & relief slab parapet. Install reinforcement steel | 7d | 2025-08-08 | 2025-08-18 | C1250, C1240 FS+3d | 48d | 0d |  |
| C1280 |  | Place and cure parapet concrete | 8d | 2025-08-19 | 2025-08-28 | C1270, C1260 | 48d | 0d | CNT0 - 6 - Bridgework |
| C1290 |  | Install parapet railing | 5d | 2025-08-29 | 2025-09-04 | C1280 | 52d | 0d |  |
| C1300 |  | Install Electrical Features, Street & Bridge Lighting and Reset Traffic Light | 10d | 2025-08-29 | 2025-09-11 | C1280, U300 | 49d | 0d |  |
| C1310 |  | Construct Roadway Curb and Temporary Pavement | 5d | 2025-08-29 | 2025-09-04 | C1280 | 49d | 0d |  |
| C1320 |  | Construct Sidewalk and ADA Ramps | 5d | 2025-08-29 | 2025-09-04 | C1280 | 54d | 5d |  |
| C1330 |  | Construct Pavement Box | 5d | 2025-09-05 | 2025-09-11 | C1310, C1240 | 49d | 0d |  |
| C1340 |  | Install Beam Guiderail | 2d | 2025-09-05 | 2025-09-08 | C1280, C1290 | 52d | 3d |  |

| ID | WBS | Activity | Duration | Start | Finish | Predecessors | Total float | Free float | Calendar |
| --- | --- | --- | --- | --- | --- | --- | --- | --- | --- |
|  | 02 | **Stage 2** |  | 2025-09-12 | 2026-07-15 |  |  |  |  |
| D1000 |  | Place MPT | 2d | 2025-09-12 | 2025-09-15 | M120, B1010 | 49d | 0d |  |
| D1010 |  | Install SESC Measures | 2d | 2025-09-16 | 2025-09-17 | D1000 | 50d | 1d |  |
| D1020 |  | Clearing Site | 3d | 2025-09-16 | 2025-09-18 | D1000 | 49d | 0d | Route 49 Tree Clearing |
| D1060 |  | Install Temporary Sheeting Along Staging Line | 2d | 2025-09-16 | 2025-09-17 | D1000 | 51d | 2d |  |
| D1050 |  | Connect New Water Main to Existing Line | 1d | 2025-09-19 | 2025-09-19 | D1020, D1010 | 49d | 0d |  |
| D1030 |  | Remove Remaining Portion of Existing Deck and Superstructure, and Existing Bridge Mounted Water Main and Sanitary Sewer | 5d | 2025-09-22 | 2025-09-26 | D1000, D1050, D1060 | 49d | 0d |  |
| D1040 |  | Remove existing bridge approach roadways & excavate to bottom of proposed backwall | 2d | 2025-09-29 | 2025-09-30 | D1030, D1020, D1010, D1060 | 49d | 43d |  |
| D1070 |  | Remove Stage 1 Cofferdam & Install Temporary Cofferdam for Stage 2 | 10d | 2025-12-01 | 2025-12-12 | D1060, D1050, D1040 | 6d | 0d | Route 49 In Water Work |
| D1080 |  | Remove Concrete 1" Beyond Rebar at Abutments and Pier | 5d | 2025-12-15 | 2025-12-19 | D1070 | 223d |  |  |
| D1100 |  | Modify Abutments and Pier Beam Seats | 5d | 2025-12-16 | 2026-01-06 | D1070 | 185d |  | CNT0 - 6 - Bridgework |
| D1090 |  | Install Roadway Drainage Features | 10d | 2025-12-17 | 2025-12-30 | D1070 FS+2d | 41d |  |  |
| D1110 |  | Form New Face of Pier and Abutments | 7d | 2025-12-17 | 2025-12-25 | D1070 FS+2d | 7d |  |  |
| D1120 |  | Place and Cure Concrete for Pier and Abutment Faces & Beam Seats | 20d | 2026-01-06 | 2026-02-25 | D1110 | 0d |  | CNT0 - 6 - Bridgework |
| D1130 |  | Install new bearings and erect remaining superstructure | 2d | 2026-02-26 | 2026-02-27 | D1090, D1120 | 0d |  |  |
| D1140 |  | Form backwall and install reinforcement steel | 10d | 2026-03-02 | 2026-03-13 | D1130 | 0d |  |  |
| D1160 |  | Install deck pans/ overhang and reinforcement steel | 10d | 2026-03-16 | 2026-03-27 | D1140 | 0d |  |  |
| D1150 |  | Place and cure concrete for backwalls | 7d | 2026-03-17 | 2026-03-27 | D1140 | 0d |  | CNT0 - 6 - Bridgework |
| D1170 |  | Place and cure deck concrete | 15d | 2026-03-30 | 2026-04-17 | D1160, D1150 | 0d |  | CNT0 - 6 - Bridgework |
| D1180 |  | Backfill behind backwall/abutments | 2d | 2026-04-06 | 2026-04-07 | D1150, D1160 FS+5d | 15d |  |  |
| D1190 |  | Form & place reinforcement for portion of sleeper slabs | 5d | 2026-04-29 | 2026-05-05 | D1170 FS+7d, D1180 | 0d |  |  |
| D1200 |  | Place & cure sleeper slab concrete | 8d | 2026-05-06 | 2026-05-15 | D1190, D1180, D1170 | 0d |  | CNT0 - 6 - Bridgework |
| D1210 |  | Form & place reinforcement and strip seal joint for portion of relief slab | 5d | 2026-05-11 | 2026-05-15 | D1190 FS+3d, D1180, D1170 | 0d |  |  |
| D1220 |  | Place & cure relief slab concrete | 15d | 2026-05-18 | 2026-06-05 | D1210, D1200 | 0d |  | CNT0 - 6 - Bridgework |
| D1230 |  | Form deck & relief slab sidewalk. Install reinforcement steel | 5d | 2026-05-21 | 2026-05-27 | D1210 FS+3d, D1200 | 9d | 7d |  |
| D1240 |  | Place and cure deck & relief slab sidewalk concrete | 8d | 2026-06-08 | 2026-06-17 | D1230, D1220 | 2d |  | CNT0 - 6 - Bridgework |
| D1250 |  | Form deck & relief slab parapet. Install reinforcement steel | 7d | 2026-06-11 | 2026-06-19 | D1220 FS+3d, D1230 | 0d |  |  |
| D1260 |  | Place and cure parapet concrete | 8d | 2026-06-22 | 2026-07-01 | D1250, D1240 | 0d |  | CNT0 - 6 - Bridgework |
| D1270 |  | Remove cofferdam | 3d | 2026-07-02 | 2026-07-07 | D1260 | 6d |  | Route 49 In Water Work |
| D1280 |  | Install parapet railing | 5d | 2026-07-02 | 2026-07-08 | D1260 | 3d | 0d |  |
| D1290 |  | Install Electrical Features, Street & Bridge Lighting | 10d | 2026-07-02 | 2026-07-15 | D1260 | 0d |  |  |
| D1300 |  | Construct Curb & Remove Temporary Pavement Constructed During Pre-Stage 1 | 5d | 2026-07-02 | 2026-07-08 | D1260 | 0d |  |  |
| D1310 |  | Construct Sidewalk and ADA Ramps | 5d | 2026-07-02 | 2026-07-08 | D1260 | 5d |  |  |
| D1320 |  | Construct Pavement Box | 5d | 2026-07-09 | 2026-07-15 | D1300, D1220 | 0d |  |  |
| D1330 |  | Install Beam Guiderail | 2d | 2026-07-09 | 2026-07-10 | D1280 | 3d |  |  |

| ID | WBS | Activity | Duration | Start | Finish | Predecessors | Total float | RESP - Responsibility | Classification |
| --- | --- | --- | --- | --- | --- | --- | --- | --- | --- |
|  | 03 | **Post-Stage 2** |  | 2026-07-16 | 2026-08-05 |  |  |  |  |
| A1000 |  | Place MPT | 2d | 2026-07-16 | 2026-07-17 | M130, D1270, D1320 | 0d |  |  |
| A1010 |  | Remove Temporary Pavement at NW and NE Corners. | 5d | 2026-07-20 | 2026-07-24 | A1000 | 0d |  |  |
| A1020 |  | Construct remaining 2' of westbound sidewalk, curb and remaining drainage features | 8d | 2026-07-20 | 2026-07-29 | A1000 | 5d |  |  |
| A1030 |  | Perform topsoiling, fertilizing and seeding | 8d | 2026-07-20 | 2026-07-29 | A1000 | 5d |  |  |
| A1040 |  | Reset Remaining valves and manhole covers | 2d | 2026-07-20 | 2026-07-21 | A1000 | 3d |  |  |
| A1070 |  | Tree Plantings | 10d | 2026-07-20 | 2026-07-31 | A1000 | 2d |  |  |
| A1050 |  | Mill, Pave & Stripe to Final Condition | 7d | 2026-07-27 | 2026-08-04 | A1010, A1040 | 0d |  |  |
| A1060 |  | Remove SESC Measures and MPT | 1d | 2026-08-05 | 2026-08-05 | A1050, A1070 | 0d |  |  |
|  | 10 | **Final Cleanup** |  | 2026-08-06 | 2026-10-28 |  |  |  |  |
| F9000 |  | Final Cleanup - Punch list - Submittals | 60d | 2026-08-06 | 2026-10-28 | M900, A1010, A1020, A1030, A1040, A1060 | 0d | CONP | MISC |
|  | P | **Procurement** |  | 2024-09-05 | 2024-12-25 |  |  |  |  |
|  | CS | **Contractor Submittals (Not Materials)** |  | 2024-09-05 | 2024-11-06 |  |  |  |  |
| PS100 |  | Safety Plan (Approved) | 45d | 2024-09-05 | 2024-11-06 | M300 | 45d | CONP |  |
| PS110 |  | Night Lighting Plan (Approved) | 45d | 2024-09-05 | 2024-11-06 | M300 | 45d | CONP |  |
| PS120 |  | Paving Plan (Approved) | 45d | 2024-09-05 | 2024-11-06 | M300 | 45d | CONP |  |
| PS130 |  | Concrete (Approved) | 45d | 2024-09-05 | 2024-11-06 | M300 | 45d | CONP |  |
| PS140 |  | Asphalt (Approved) | 45d | 2024-09-05 | 2024-11-06 | M300 | 45d | CONP |  |
| PS150 |  | Vibration Monitoring Plan (Approved) | 45d | 2024-09-05 | 2024-11-06 | M300 | 35d |  |  |
| PS160 |  | Dewatering Plan (Approved) | 45d | 2024-09-05 | 2024-11-06 | M300 | 35d |  |  |
| PS170 |  | Temporary Cofferdam (Approved) | 45d | 2024-09-05 | 2024-11-06 | M300 | 35d |  |  |
| PS180 |  | Temporary Sheeting for Staged Construction (Approved) | 45d | 2024-09-05 | 2024-11-06 | M300 | 35d |  |  |
| PS190 |  | Temporary Shielding (Approved) | 45d | 2024-09-05 | 2024-11-06 | M300 | 35d |  |  |
| PS200 |  | Temporary Beam (Approved) | 45d | 2024-09-05 | 2024-11-06 | M300 | 35d |  |  |
| PS210 |  | Reinforced Elastomeric Bearing Pads (Certified) | 30d | 2024-09-05 | 2024-10-16 | M300 | 50d |  |  |
| PS220 |  | Beam Erection Plan (Approved) | 45d | 2024-09-05 | 2024-11-06 | M300 | 35d |  |  |
| PS230 |  | Structural Steel Fabrication (Certified) | 30d | 2024-09-05 | 2024-10-16 | M300 | 50d |  |  |
| PS240 |  | SIP Forms (Approved) | 45d | 2024-09-05 | 2024-11-06 | M300 | 35d |  |  |
| PS250 |  | Deck Overhang Formwork (Approved) | 45d | 2024-09-05 | 2024-11-06 | M300 | 35d |  |  |
| PS260 |  | Deck Pour Plan (Approved) | 45d | 2024-09-05 | 2024-11-06 | M300 | 35d |  |  |
| PS270 |  | Steel 1-Bar Railing (Certified) | 30d | 2024-09-05 | 2024-10-16 | M300 | 50d |  |  |
| PS280 |  | Strip Seal Expansion Joint Assembly (Certified) | 30d | 2024-09-05 | 2024-10-16 | M300 | 50d |  |  |
| PS290 |  | Lighting Standards (Certified) | 30d | 2024-09-05 | 2024-10-16 | M300 | 50d |  |  |
| PS300 |  | ITS Junction Boxes (Certified) | 30d | 2024-09-05 | 2024-10-16 | M300 | 50d |  |  |
| PS310 |  | Directional Drilling Plan (Approved) | 45d | 2024-09-05 | 2024-11-06 | M300 | 35d |  |  |
| PS320 |  | Directional Drilling Excavation Support Plan (Approved) | 45d | 2024-09-05 | 2024-11-06 | M300 | 35d |  |  |
| PS330 |  | Directional Drilling Dewatering Plan (Approved) | 45d | 2024-09-05 | 2024-11-06 | M300 | 35d |  |  |
| PS380 |  | Demolition Plan (Approved) | 45d | 2024-09-05 | 2024-11-06 | M300 | 35d |  |  |
| PS390 |  | Water Works Submittal (Certified) | 30d | 2024-09-05 | 2024-10-16 | M300 | 50d |  |  |
| PS400 |  | Verizon Conduit Temporary Supports (Approved) | 45d | 2024-09-05 | 2024-11-06 | M300 | 35d |  |  |

| ID | WBS | Activity | Duration | Start | Finish | Predecessors | Total float | RESP - Responsibility |
| --- | --- | --- | --- | --- | --- | --- | --- | --- |
|  | 01 | **Safety Plan** |  |  |  |  |  |  |
|  | 1 | **Material Submittals (Long Lead Items)** |  | 2024-09-05 | 2024-12-25 |  |  |  |
| PS340 |  | Air Release Valve Chamber (Approved) | 60d | 2024-09-05 | 2024-11-27 | M300 | 20d | CONP |
| PS350 |  | Sanitary Sewer Concrete Chambers & Cleaning (Pigging) Equipment (Approved) | 80d | 2024-09-05 | 2024-12-25 | M300 | 0d | CONP |
| PS360 |  | Sanitary Sewer Pipes & Casing Pipes (Certified) | 30d | 2024-09-05 | 2024-10-16 | M300 | 50d |  |
| PS370 |  | Water Main Pipes (Certified) | 30d | 2024-09-05 | 2024-10-16 | M300 | 50d |  |
| PS420 |  | Electrical Submittal (Approved) | 60d | 2024-09-05 | 2024-11-27 | M300 | 20d |  |

## Activity codes

| Code | Value | Meaning |
| --- | --- | --- |
| Classification | MISC | Miscellaneous Items |
| RESP - Responsibility | CONP | Prime Contractor |
| RESP - Responsibility | NDOT | New Jersey Department of Transportation |
